# Bouwplanning v1.0

Schedule from an IFC model, 2027-03-01 to 2028-01-18.
Zorgcentrum De Linde

## Schedule

| ID | Activity | Type | Duration | Start | Finish | Predecessors | Planned start | Planned finish | Total float | Free float |
| --- | --- | --- | --- | --- | --- | --- | --- | --- | --- | --- |
| 1 | **1. Voorbereiding** |  | 5d | 2027-03-01 | 2027-03-16 |  | 2027-03-01 | 2027-03-05 | 0d |  |
| 1.1 | Bouwplaats inrichten |  | 5d | 2027-03-01 | 2027-03-05 |  |  |  | 0d |  |
| 1.2 | Grondonderzoek aanvullend |  | 3d | 2027-03-08 | 2027-03-10 | 1.1 | 2027-03-01 | 2027-03-03 | 199d | 0d |
| 1.3 | Bomen kappen en verplanten |  | 3d | 2027-03-11 | 2027-03-15 | 1.2 | 2027-03-01 | 2027-03-03 | 199d | 0d |
| 1.4 | Start bouw | milestone | 0d | 2027-03-16 | 2027-03-16 | 1.3 | 2027-03-01 | 2027-03-01 | 199d |  |
| 2 | **2. Fundering** |  | 5d | 2027-03-09 | 2027-04-30 |  | 2027-03-01 | 2027-03-05 | 0d |  |
| 2.1 | Heien funderingspalen |  | 12d | 2027-03-09 | 2027-03-24 | 1.1 SS+6d | 2027-03-01 | 2027-03-16 | 0d |  |
| 2.2 | Funderingsbalken |  | 8d | 2027-03-25 | 2027-04-07 | 2.1 | 2027-03-01 | 2027-03-10 | 169d | 0d |
| 2.3 | Riolering en grondleidingen |  | 8d | 2027-04-08 | 2027-04-19 | 2.2 | 2027-03-01 | 2027-03-10 | 169d | 0d |
| 2.4 | Begane grondvloer storten |  | 8d | 2027-04-20 | 2027-04-30 | 2.3 | 2027-03-01 | 2027-03-10 | 169d |  |
| 3 | **3. Ruwbouw** |  | 5d | 2027-03-16 | 2027-06-24 |  | 2027-03-01 | 2027-03-05 | 0d |  |
| 3.1 | Begane grond draagstructuur |  | 12d | 2027-03-16 | 2027-04-02 | 2.1 SS | 2027-03-01 | 2027-03-16 | 0d |  |
| 3.2 | Verdieping 1 beton |  | 10d | 2027-04-05 | 2027-04-16 | 3.1 | 2027-03-01 | 2027-03-12 | 0d |  |
| 3.3 | Verdieping 2 beton |  | 10d | 2027-04-19 | 2027-05-03 | 3.2 | 2027-03-01 | 2027-03-12 | 0d |  |
| 3.4 | Metselwerk gevels |  | 15d | 2027-05-04 | 2027-05-27 | 3.3 | 2027-03-01 | 2027-03-19 | 0d |  |
| 3.5 | Binnenwanden kalkzandsteen |  | 10d | 2027-05-28 | 2027-06-10 | 3.4 | 2027-03-01 | 2027-03-12 | 0d |  |
| 3.6 | Dakconstructie |  | 10d | 2027-06-11 | 2027-06-24 | 3.5 | 2027-03-01 | 2027-03-12 | 0d |  |
| 3.7 | Hoogste punt | milestone | 0d | 2027-06-24 | 2027-06-24 | 3.6 | 2027-03-01 | 2027-03-01 | 133d |  |
| 4 | **4. Gevel & Dak** |  | 5d | 2027-06-08 | 2027-08-16 |  | 2027-03-01 | 2027-03-05 | 0d |  |
| 4.1 | Gevelisolatie en afwerking |  | 12d | 2027-06-08 | 2027-06-23 | 3.6 FS-13d | 2027-03-01 | 2027-03-16 | 0d |  |
| 4.2 | Kozijnen en puien |  | 10d | 2027-06-24 | 2027-07-07 | 4.1 | 2027-03-01 | 2027-03-12 | 0d |  |
| 4.3 | Dakisolatie en bedekking |  | 8d | 2027-07-08 | 2027-07-19 | 4.2 | 2027-03-01 | 2027-03-10 | 0d |  |
| 4.4 | Dakranden en hemelwaterafvoer |  | 5d | 2027-07-20 | 2027-08-16 | 4.3, 3.6 FF+2d | 2027-03-01 | 2027-03-05 | 0d |  |
| 4.5 | Wind- en waterdicht | milestone | 0d | 2027-08-16 | 2027-08-16 | 4.4 | 2027-03-01 | 2027-03-01 | 111d |  |

| ID | Activity | Type | Duration | Start | Finish | Predecessors | Planned start | Planned finish | Total float | Free float |
| --- | --- | --- | --- | --- | --- | --- | --- | --- | --- | --- |
| 5 | **5. Installaties** |  | 5d | 2027-08-17 | 2027-11-24 |  | 2027-03-01 | 2027-03-05 | 0d |  |
| 5.1 | Elektra hoofdverdeling |  | 8d | 2027-08-17 | 2027-08-26 | 4.4 | 2027-03-01 | 2027-03-10 | 0d |  |
| 5.2 | Noodstroomvoorziening |  | 5d | 2027-08-27 | 2027-09-02 | 5.1 | 2027-03-01 | 2027-03-05 | 39d | 0d |
| 5.3 | Zuurstof en medische gassen |  | 8d | 2027-09-03 | 2027-09-14 | 5.2 | 2027-03-01 | 2027-03-10 | 39d | 0d |
| 5.4 | CV en koeling |  | 10d | 2027-09-08 | 2027-09-21 | 5.3 SS+3d | 2027-03-01 | 2027-03-12 | 39d | 0d |
| 5.5 | Ventilatie met HEPA filters |  | 10d | 2027-09-22 | 2027-10-05 | 5.4 | 2027-03-01 | 2027-03-12 | 39d | 0d |
| 5.6 | Sprinkler en BMI |  | 8d | 2027-10-06 | 2027-10-15 | 5.5 | 2027-03-01 | 2027-03-10 | 39d | 0d |
| 5.7 | Liftinstallatie |  | 15d | 2027-10-18 | 2027-11-05 | 5.6 | 2027-03-01 | 2027-03-19 | 39d | 0d |
| 5.8 | Zuster-oproepsysteem |  | 5d | 2027-11-08 | 2027-11-12 | 5.7 | 2027-03-01 | 2027-03-05 | 39d | 0d |
| 5.9 | ICT bekabeling |  | 8d | 2027-11-15 | 2027-11-24 | 5.8 | 2027-03-01 | 2027-03-10 | 39d |  |
| 6 | **6. Afbouw** |  | 5d | 2027-10-11 | 2027-12-23 |  | 2027-03-01 | 2027-03-05 | 0d |  |
| 6.1 | Scheidingswanden |  | 8d | 2027-10-11 | 2027-10-20 | 5.1 SS+39d | 2027-03-01 | 2027-03-10 | 0d |  |
| 6.2 | Plafonds en wanden afwerken |  | 10d | 2027-10-21 | 2027-11-03 | 6.1 | 2027-03-01 | 2027-03-12 | 0d |  |
| 6.3 | Tegelwerk natte ruimten |  | 8d | 2027-11-04 | 2027-11-15 | 6.2 | 2027-03-01 | 2027-03-10 | 0d |  |
| 6.4 | Dekvloeren en vloerafwerking |  | 8d | 2027-11-16 | 2027-11-25 | 6.3 | 2027-03-01 | 2027-03-10 | 0d |  |
| 6.5 | Schilderwerk |  | 10d | 2027-11-26 | 2027-12-09 | 6.4 | 2027-03-01 | 2027-03-12 | 0d |  |
| 6.6 | Keukens en pantry |  | 5d | 2027-12-10 | 2027-12-16 | 6.5 | 2027-03-01 | 2027-03-05 | 0d |  |
| 6.7 | Sanitair plaatsen |  | 5d | 2027-12-17 | 2027-12-23 | 6.6 | 2027-03-01 | 2027-03-05 | 0d |  |
| 7 | **7. Oplevering** |  | 5d | 2027-12-24 | 2028-01-18 |  | 2027-03-01 | 2027-03-05 | 0d |  |
| 7.1 | Buitenterrein aanleggen |  | 8d | 2027-12-24 | 2028-01-04 | 6.7 | 2027-03-01 | 2027-03-10 | 0d |  |
| 7.2 | Inrichting kamers |  | 5d | 2028-01-05 | 2028-01-11 | 7.1 | 2027-03-01 | 2027-03-05 | 0d |  |
| 7.3 | Testen installaties |  | 5d | 2028-01-12 | 2028-01-18 | 7.2 | 2027-03-01 | 2027-03-05 | 0d |  |
| 7.4 | Oplevering | milestone | 0d | 2028-01-18 | 2028-01-18 | 7.3 | 2027-03-01 | 2027-03-01 | 0d |  |
